# Pinnacle Move project plan 09-13-22

Schedule from MS Project, 2022-03-31 to 2022-12-31, A marks actual dates.

## Calendars

- Standard: Mon-Fri 08:00-12:00, 13:00-17:00; Sat-Sun off.

## Resources

| Resource |
| --- |
| Technology |
| Harald Roomets |
| David King |
| Operations |
| Pinnacle |
| QA Conduent |
| Tina |
| Telesia |

## Schedule

| ID | WBS | Task | Type | Duration | Start | Finish | Complete | Remaining | Actual start | Actual finish | Resources | Work | Actual work |
| --- | --- | --- | --- | --- | --- | --- | --- | --- | --- | --- | --- | --- | --- |
| 1 | 1 | **Pinnacle Financial Partners Charlotte Lockbox High Level Implementation Schedule** |  | 149d? | 2022-04-06 | 2022-10-31 | 95% | 7.21d? | 2022-03-31 |  |  | 11136h | 9863.48h |
| 2 | 1.1 | **PLAN** |  | 51d? | 2022-04-06 A | 2022-06-15 | 99% | 0d? |  |  |  | 3784h | 2784.28h |
| 3 | 1.1.1 | **Project Intake** |  | 11d | 2022-04-06 A | 2022-04-20 | 100% |  |  | 2022-04-06 |  |  |  |
| 4 | 1.1.1.1 | Identify Conduent project team resources | manual | 1d | 2022-04-06 A | 2022-04-06 A | 100% |  |  |  |  |  |  |
| 5 | 1.1.1.2 | Host Internal Project Kick Off | manual | 1d | 2022-04-06 A | 2022-04-06 A | 100% |  |  |  |  |  |  |
| 6 | 1.1.2 | **Project Management Plans** |  | 26d | 2022-04-20 A | 2022-05-25 | 100% |  |  | 2022-04-20 |  |  |  |
| 7 | 1.1.2.1 | Develop Project Org Chart | manual | 1d | 2022-04-20 A | 2022-04-20 A | 100% |  |  |  |  |  |  |
| 8 | 1.1.2.2 | Develop Communication Plan | manual | 1d | 2022-04-20 A | 2022-04-20 A | 100% |  |  |  |  |  |  |
| 9 | 1.1.2.3 | Assemble RAID log | manual | 1d | 2022-04-20 A | 2022-04-20 A | 100% |  |  |  |  |  |  |
| 10 | 1.1.2.4 | Submit TABS new project request | manual | 1d | 2022-04-20 A | 2022-04-20 A | 100% |  |  |  |  |  |  |
| 11 | 1.1.2.5 | Develop Project Management Plans | manual | 1d | 2022-04-20 A | 2022-04-20 A | 100% |  |  |  |  |  |  |
| 12 | 1.1.2.6 | Draft Project Schedule | manual | 1d | 2022-04-20 A | 2022-04-20 A | 100% |  |  |  |  |  |  |
| 13 | 1.1.3 | **Client Project Kick Off** |  | 16d? | 2022-05-25 A | 2022-06-15 | 100% |  |  | 2022-05-25 |  |  |  |
| 14 | 1.1.3.1 | Identify Pinnacle Financial Partners resources | manual | 1d | 2022-05-25 A | 2022-05-25 A | 100% |  |  |  |  |  |  |
| 15 | 1.1.3.2 | Schedule/Host Client Project Kick Off | manual | 1d | 2022-05-25 A | 2022-05-25 A | 100% |  |  |  |  |  |  |
| 16 | 1.1.4 | **Communications Plan** |  | 142d? | 2022-04-15 A | 2022-10-31 | 99% | 0d? |  |  | Pinnacle | 3784h | 2784.28h |
| 17 | 1.1.4.1 | Email to treasury management teams | manual | 11d | 2022-04-15 A | 2022-04-29 A | 100% |  |  |  | Pinnacle | 88h | 88h |
| 18 | 1.1.4.2 | Email to FAs for the 25-26 clients affected. No action required; just background. | manual | 15d | 2022-07-11 A | 2022-07-29 A | 100% |  |  |  | Pinnacle | 120h | 120h |
| 19 | 1.1.4.3 | Talking points for treasury management associates to use | manual | 15d | 2022-07-11 A | 2022-07-29 A | 100% |  |  |  | Pinnacle | 120h | 120h |
| 20 | 1.1.4.4 | **Module on the treasury management intranet page** |  | 15d | 2022-07-11 A | 2022-07-29 A | 100% |  |  |  | Pinnacle | 480h | 480h |
| 21 | 1.1.4.4.1 | Important Comms | manual | 15d | 2022-07-11 A | 2022-07-29 A | 100% |  |  |  | Pinnacle | 120h | 120h |
| 22 | 1.1.4.4.2 | Associate tools for download | manual | 15d | 2022-07-11 A | 2022-07-29 A | 100% |  |  |  | Pinnacle | 120h | 120h |
| 23 | 1.1.4.4.3 | Client tools for download | manual | 15d | 2022-07-11 A | 2022-07-29 A | 100% |  |  |  | Pinnacle | 120h | 120h |
| 24 | 1.1.4.5 | **PNFP.com** |  | 15d | 2022-07-11 A | 2022-07-29 A | 100% |  |  |  | Pinnacle | 360h | 360h |
| 25 | 1.1.4.5.1 | Page with full details and important materials for clients | manual | 15d | 2022-07-11 A | 2022-07-29 A | 100% |  |  |  | Pinnacle | 120h | 120h |
| 26 | 1.1.4.5.2 | Linked from Treasury Management and Treasury Management Logins pages | manual | 15d | 2022-07-11 A | 2022-07-29 A | 100% |  |  |  | Pinnacle | 120h | 120h |

| ID | WBS | Task | Type | Duration | Start | Finish | Predecessors | Complete | Remaining | Actual start | Total slack | Constraint | Resources | Work | Actual work |
| --- | --- | --- | --- | --- | --- | --- | --- | --- | --- | --- | --- | --- | --- | --- | --- |
| 27 | 1.1.4.6 | **Client Emails – Central send with immediate TMA follow-up** |  | 23d | 2022-08-01 A | 2022-08-31 A |  | 100% |  |  |  |  | Pinnacle | 736h | 736h |
| 28 | 1.1.4.6.1 | Announce with quick overview of what will happen | manual | 23d | 2022-08-01 A | 2022-08-31 A |  | 100% |  |  |  |  | Pinnacle | 184h | 184h |
| 29 | 1.1.4.6.2 | Reminder with upcoming action items | manual | 23d | 2022-08-01 A | 2022-08-31 A |  | 100% |  |  |  |  | Pinnacle | 184h | 184h |
| 30 | 1.1.4.6.3 | Final reminder with required action items | manual | 23d | 2022-08-01 A | 2022-08-31 A |  | 100% |  |  |  |  | Pinnacle | 184h | 184h |
| 31 | 1.1.4.7 | **Email Templates** |  | 23d | 2022-08-01 A | 2022-08-31 |  | 99% | 0d |  |  |  | Pinnacle | 408h | 224h |
| 32 | 1.1.4.7.1 | For TMAs to use in following up on centrally sent emails | manual | 23d | 2022-08-01 A | 2022-08-31 A |  | 100% |  |  |  |  | Pinnacle | 184h | 184h |
| 33 | 1.1.4.7.2 | TMAs Newsletter | manual | 5d | 2022-09-19 A | 2022-09-23 A |  | 100% |  |  |  |  | Pinnacle | 40h | 40h |
| 34 | 1.1.4.8 | **Email to FAs** |  | 21d | 2022-10-03 A | 2022-10-31 |  | 99% | 0d |  |  |  | Pinnacle | 336h | 168h |
| 35 | 1.1.4.8.1 | Announce with quick overview of Lockbox options, locations, materials they will use, referral/partnership process | manual | 21d | 2022-10-03 A | 2022-10-31 A |  | 100% |  |  |  |  | Pinnacle | 168h | 168h |
| 36 | 1.2 | **DESIGN** |  | 23d | 2022-06-15 | 2022-07-15 |  | 94% | 1.35d | 2022-03-31 |  |  |  | 528h | 528h |
| 37 | 1.2.1 | **Operational Requirements** |  | 123d | 2022-05-02 A | 2022-10-19 A |  | 100% |  |  |  |  |  | 528h | 528h |
| 38 | 1.2.1.1 | Assess Staffing and Training Requirements | manual | 30d | 2022-06-16 A | 2022-07-27 A |  | 100% |  |  |  |  |  |  |  |
| 39 | 1.2.1.2 | Review Existing Operational Procedures | manual | 60d | 2022-07-28 A | 2022-10-19 A | 38 | 100% |  |  |  |  |  |  |  |
| 40 | 1.2.1.3 | Identify options with Courier | manual | 22d | 2022-05-02 A | 2022-05-31 A |  | 100% |  |  |  |  | Pinnacle | 176h | 176h |
| 41 | 1.2.1.4 | Determine options to maintain or close Raleigh PO | manual | 22d | 2022-05-02 A | 2022-05-31 A |  | 100% |  |  |  |  | Pinnacle | 176h | 176h |
| 42 | 1.2.1.5 | Identify test clients | manual | 22d | 2022-05-02 A | 2022-05-31 A |  | 100% |  |  |  |  | Pinnacle | 176h | 176h |
| 43 | 1.2.2 | **Site Requirements** |  | 175d | 2022-03-31 A | 2022-11-30 |  | 92% | 14.51d |  | 0d |  |  |  |  |
| 44 | 1.2.2.1 | **Server** |  | 21d | 2022-03-31 A | 2022-04-28 A |  | 100% |  |  |  |  |  |  |  |
| 45 | 1.2.2.1.1 | Confirm Server configuration requirements |  | 20d | 2022-03-31 A | 2022-04-27 A |  | 100% |  |  |  |  |  |  |  |
| 46 | 1.2.2.1.2 | Submit PO request |  | 1d | 2022-04-28 A | 2022-04-28 A | 45 | 100% |  |  |  |  |  |  |  |
| 47 | 1.2.2.2 | **Printers** |  | 7d | 2022-03-31 A | 2022-04-08 A |  | 100% |  |  |  |  |  |  |  |
| 48 | 1.2.2.2.1 | Identify printer requirements |  | 5d | 2022-03-31 A | 2022-04-06 A |  | 100% |  |  |  |  |  |  |  |
| 49 | 1.2.2.2.2 | order printers |  | 2d | 2022-04-07 A | 2022-04-08 A | 48 | 100% |  |  |  | start no earlier than 2022-04-06 |  |  |  |
| 50 | 1.2.2.3 | **Desktop Computers** |  | 1d | 2022-06-28 A | 2022-06-28 A |  | 100% |  |  |  |  |  |  |  |
| 51 | 1.2.2.3.1 | Identify desktop computer requirements | manual | 1d | 2022-06-28 A | 2022-06-28 A |  | 100% |  |  |  |  |  |  |  |

Notes:
- 41: Closing Raleigh Pos / Transfer all LBXs to CLT
- 42: WLBX = LoanOps -- RLBX = APEX

| ID | WBS | Task | Type | Duration | Start | Finish | Complete | Remaining | Actual finish | Total slack | Work | Actual work |
| --- | --- | --- | --- | --- | --- | --- | --- | --- | --- | --- | --- | --- |
| 52 | 1.2.2.4 | **Network/Infrastructure** |  | 66d | 2022-03-31 A | 2022-06-30 | 100% |  | 2022-03-31 |  |  |  |
| 53 | 1.2.2.4.1 | Submit Network/Infrastructure intake assessment | manual | 1d | 2022-03-31 A | 2022-03-31 A | 100% |  |  |  |  |  |
| 54 | 1.2.2.4.2 | Identify Network/Infrastructure requirements | manual | 1d | 2022-03-31 A | 2022-03-31 A | 100% |  |  |  |  |  |
| 55 | 1.2.2.5 | **Lockbox Platform Configurations** |  | 87d | 2022-03-31 A | 2022-07-29 A | 100% |  |  |  |  |  |
| 56 | 1.2.2.5.1 | Identify Opex job requirements | manual | 87d | 2022-03-31 A | 2022-07-29 A | 100% |  |  |  |  |  |
| 57 | 1.2.2.5.2 | Identify Lockbox platform configuration requirements | manual | 87d | 2022-03-31 A | 2022-07-29 A | 100% |  |  |  |  |  |
| 58 | 1.2.2.6 | **Business Continuity Plan** |  | 175d | 2022-03-31 A | 2022-11-30 | 82% | 31.5d |  | 0d |  |  |
| 59 | 1.2.2.6.1 | Identify Business Continuity requirements | manual | 175d | 2022-03-31 A | 2022-11-30 | 82% | 31.5d |  |  |  |  |
| 60 | 1.3 | **IMPLEMENTATION** |  | 145d? | 2022-03-31 A | 2022-10-19 | 99% | 0.01d? |  | 52d | 6552h | 6463.2h |
| 61 | 1.3.1 | **Operational Setup** |  | 68d | 2022-07-18 A | 2022-10-19 A | 100% |  |  |  |  |  |
| 62 | 1.3.1.1 | **Update operational procedures** |  | 68d | 2022-07-18 A | 2022-10-19 A | 100% |  |  |  |  |  |
| 63 | 1.3.1.1.1 | Setup staff training for operational procedures | manual | 68d | 2022-07-18 A | 2022-10-19 A | 100% |  |  |  |  |  |
| 64 | 1.3.2 | **Site Setup** |  | 66d | 2022-03-31 A | 2022-06-30 | 100% |  | 2022-08-05 |  |  |  |
| 65 | 1.3.2.1 | **Network/Infrastructure/Firewall** |  | 66d | 2022-03-31 A | 2022-06-30 | 100% |  | 2022-07-29 |  |  |  |
| 66 | 1.3.2.1.1 | Finalize Network/Infrastructure Requirements | manual | 87d | 2022-03-31 A | 2022-07-29 A | 100% |  |  |  |  |  |
| 67 | 1.3.2.1.2 | Submit Firewall Intake Assessment/Approval request | manual | 87d | 2022-03-31 A | 2022-07-29 A | 100% |  |  |  |  |  |
| 68 | 1.3.2.1.3 | Install/Configure/Test network/infrastructure changes - Spoke Site | manual | 87d | 2022-03-31 A | 2022-07-29 A | 100% |  |  |  |  |  |
| 69 | 1.3.2.1.4 | Install/Configure/Test network/infrastructure changes - Hub Site | manual | 87d | 2022-03-31 A | 2022-07-29 A | 100% |  |  |  |  |  |
| 70 | 1.3.2.1.5 | Vlan Assigment | manual | 66d | 2022-03-31 A | 2022-06-30 A | 100% |  |  |  |  |  |
| 71 | 1.3.2.2 | **Server** |  | 87d | 2022-03-31 A | 2022-07-29 A | 100% |  |  |  |  |  |
| 72 | 1.3.2.2.1 | Receive Servers from vendor | manual | 1d | 2022-03-31 A | 2022-03-31 A | 100% |  |  |  |  |  |
| 73 | 1.3.2.2.2 | Build/Configure/Test new servers | manual | 87d | 2022-03-31 A | 2022-07-29 A | 100% |  |  |  |  |  |
| 74 | 1.3.2.3 | **Printers** |  | 29d | 2022-06-28 A | 2022-08-05 A | 100% |  |  |  |  |  |
| 75 | 1.3.2.3.1 | Install/Configure/Test printers | manual | 29d | 2022-06-28 A | 2022-08-05 A | 100% |  |  |  |  |  |

Notes:
- 58: A plan will be created for Charlotte that will support Pinnacle -30 days from the go live
- 59: Harald will work on the BCP
- 63: Owned by Karen and Harald / Ask Harald to know who will own this taks Telesia/ karen or other?

| ID | WBS | Task | Type | Duration | Start | Finish | Complete | Actual start | Actual finish | Resources | Work | Actual work |
| --- | --- | --- | --- | --- | --- | --- | --- | --- | --- | --- | --- | --- |
| 76 | 1.3.2.4 | **Desktop Computers** |  | 29d | 2022-06-28 A | 2022-08-05 A | 100% |  |  |  |  |  |
| 77 | 1.3.2.4.1 | Install/Configure/Test desktop computers | manual | 29d | 2022-06-28 A | 2022-08-05 A | 100% |  |  |  |  |  |
| 78 | 1.3.2.5 | **Lockbox Platform Configurations** |  | 29d | 2022-06-28 A | 2022-08-05 A | 100% |  |  |  |  |  |
| 79 | 1.3.2.5.1 | Build/Test Opex job | manual | 29d | 2022-06-28 A | 2022-08-05 A | 100% |  |  |  |  |  |
| 80 | 1.3.2.5.2 | Configure/Test lockbox platform configurations | manual | 29d | 2022-06-28 A | 2022-08-05 A | 100% |  |  |  |  |  |
| 81 | 1.3.3 | **Test Planning** |  | 1d? | 2022-03-31 | 2022-03-31 | 100% | 2022-05-02 | 2022-09-23 |  | 3968h | 3968h |
| 82 | 1.3.3.1 | **System Test Prep** |  | 1d? | 2022-03-31 | 2022-03-31 | 100% | 2022-05-02 | 2022-09-23 |  | 3632h | 3632h |
| 83 | 1.3.3.1.1 | Identify Testing Resources | manual | 1d | 2022-06-15 A | 2022-06-15 A | 100% |  |  |  |  |  |
| 84 | 1.3.3.1.2 | Identify staging environment requirements | manual | 31d | 2022-06-03 A | 2022-07-15 A | 100% |  |  |  |  |  |
| 85 | 1.3.3.1.3 | Prepare test artifacts | manual | 4w | 2022-07-29 A | 2022-08-25 A | 100% |  |  |  |  |  |
| 86 | 1.3.3.1.4 | Configure staging environment | manual | 2w | 2022-09-12 A | 2022-09-23 A | 100% |  |  |  |  |  |
| 87 | 1.3.3.1.5 | Establish Caller Service and Purchase Reserve Boxes | manual | 22d | 2022-05-02 A | 2022-05-31 A | 100% |  |  | Pinnacle | 176h | 176h |
| 88 | 1.3.3.1.6 | Review Courier changes | manual | 22d | 2022-05-02 A | 2022-05-31 A | 100% |  |  | Pinnacle | 176h | 176h |
| 89 | 1.3.3.1.7 | Identify TMAs w/DUR client | manual | 22d | 2022-05-02 A | 2022-05-31 A | 100% |  |  | Pinnacle | 176h | 176h |
| 90 | 1.3.3.1.8 | Conduent CLT Processing Center Location | manual | 22d | 2022-05-02 A | 2022-05-31 A | 100% |  |  | Pinnacle | 176h | 176h |
| 91 | 1.3.3.1.9 | Charlotte PO Caller Service Location | manual | 22d | 2022-05-02 A | 2022-05-31 A | 100% |  |  | Pinnacle | 176h | 176h |
| 92 | 1.3.3.1.10 | Map LBXs from Durham PO to Charlotte PO | manual | 43d | 2022-06-01 A | 2022-07-29 A | 100% |  |  | Pinnacle | 344h | 344h |
| 93 | 1.3.3.1.11 | Parallel coupons and posting files | manual | 43d | 2022-06-01 A | 2022-07-29 A | 100% |  |  | Pinnacle | 344h | 344h |
| 94 | 1.3.3.1.12 | Cash Processing Procedures Update | manual | 43d | 2022-06-01 A | 2022-07-29 A | 100% |  |  | Pinnacle | 344h | 344h |
| 95 | 1.3.3.1.13 | Foreign Items Processing Procedures Update | manual | 43d | 2022-06-01 A | 2022-07-29 A | 100% |  |  | Pinnacle | 344h | 344h |
| 96 | 1.3.3.1.14 | Closed Box Procedures | manual | 43d | 2022-06-01 A | 2022-07-29 A | 100% |  |  | Pinnacle | 344h | 344h |
| 97 | 1.3.3.1.15 | Courier Established: South Florida Express | manual | 43d | 2022-06-01 A | 2022-07-29 A | 100% |  |  | Pinnacle | 344h | 344h |
| 98 | 1.3.3.1.16 | UPS Setup Established | manual | 43d | 2022-06-01 A | 2022-07-29 A | 100% |  |  | Pinnacle | 344h | 344h |
| 99 | 1.3.3.1.17 | TMCS Work Return Envelopes | manual | 43d | 2022-06-01 A | 2022-07-29 A | 100% |  |  | Pinnacle | 344h | 344h |
| 100 | 1.3.3.1.18 | Freeze all changes to accounts | manual | 1d | 2022-09-23 A | 2022-09-23 A | 100% |  |  |  |  |  |
| 101 | 1.3.3.1.19 | Implement and validate all Durham move changes | manual | 5d | 2022-09-19 A | 2022-09-23 A | 100% |  |  |  |  |  |

Notes:
- 84: No dedicated hardware needed, staging environment for Multibank that needs to be mimic. Completed. Same as Durham
- 87: Caller Service 90001; Reserve Boxes 90002-90051
- 88: South Florida Express
- 89: Brady Moser, Cyenthia Hudson, Leanne Rose, Louis Soldano, Dan Gingrich, Debbie Poland, Frances Harward, Mary Anne Thomas, Susan Wilkat
- 90: 5130 Parkway Plaza Blvd, Charlotte, NC 28217...
- 91: 2901 Scott Futrell Drive, Charlotte NC 28228...
- 93: Processing Date? For testing
- 95: Canadian USD Only
- 100: Confirm this date can be completed.
- 101: Confirmation that all updates/ changes for profiles are complete

| ID | WBS | Task | Type | Duration | Start | Finish | Predecessors | Complete | Remaining | Actual start | Actual finish | Total slack | Resources | Work | Actual work |
| --- | --- | --- | --- | --- | --- | --- | --- | --- | --- | --- | --- | --- | --- | --- | --- |
| 102 | 1.3.3.2 | **UAT- CONDUENT QA TESTING PLANNING** |  | 1d | 2022-03-31 | 2022-03-31 |  | 100% |  | 2022-07-15 | 2022-08-12 |  |  | 336h | 336h |
| 103 | 1.3.3.2.1 | Identify demo environment requirements | manual | 21d | 2022-07-15 A | 2022-08-12 A |  | 100% |  |  |  |  | QA Conduent | 168h | 168h |
| 104 | 1.3.3.2.2 | Prepare test artifacts | manual | 21d | 2022-07-15 A | 2022-08-12 A |  | 100% |  |  |  |  | QA Conduent | 168h | 168h |
| 105 | 1.3.4 | **Test Execution** |  | 133d | 2022-03-31 | 2022-10-03 |  | 99% | 0.04d | 2022-08-08 |  | 64d |  | 2584h | 2495.2h |
| 106 | 1.3.4.1 | **System Test Conduent System shakedown** |  | 1d | 2022-03-31 | 2022-03-31 |  | 100% |  | 2022-08-08 | 2022-09-12 |  |  |  |  |
| 107 | 1.3.4.1.1 | Execute System Test Cycle 1 |  | 2w | 2022-08-08 A | 2022-08-19 A | 80 | 100% |  |  |  |  |  |  |  |
| 108 | 1.3.4.1.2 | Execute System Test Cycle 2 |  | 3w | 2022-08-22 A | 2022-09-09 A | 107 | 100% |  |  |  |  |  |  |  |
| 109 | 1.3.4.1.3 | Review/Sign Off System Test Results |  | 1d | 2022-09-12 A | 2022-09-12 A | 108 | 100% |  |  |  |  |  |  |  |
| 110 | 1.3.4.2 | **UAT- QA TESTING** |  | 12d | 2022-09-12 A | 2022-09-27 A |  | 100% |  |  |  |  |  | 8h | 8h |
| 111 | 1.3.4.2.1 | Execute UAT Cycle 1 |  | 1w | 2022-09-13 A | 2022-09-19 A | 109 | 100% |  |  |  |  |  |  |  |
| 112 | 1.3.4.2.2 | Execute UAT Cycle 2 |  | 1w | 2022-09-20 A | 2022-09-26 A | 111 | 100% |  |  |  |  |  |  |  |
| 113 | 1.3.4.2.3 | Review/Sign Off UAT Test Results |  | 1d | 2022-09-27 A | 2022-09-27 A | 112 | 100% |  |  |  |  |  |  |  |
| 114 | 1.3.4.2.4 | Date items retail and wholesale for testing | manual | 1d | 2022-09-12 A | 2022-09-12 A |  | 100% |  |  |  |  | Tina | 8h | 8h |
| 115 | 1.3.4.3 | **CAT (Client on site)** |  | 6d | 2022-09-26 A | 2022-10-03 |  | 99% | 0d |  |  | 64d |  | 2576h | 2487.2h |
| 116 | 1.3.4.3.1 | conduct client on site review | manual | 1w | 2022-09-26 A | 2022-09-30 A | 113 | 100% |  |  |  |  |  |  |  |
| 117 | 1.3.4.3.2 | Review/Sign Off CAT Test Results |  | 1d | 2022-10-03 A | 2022-10-03 | 116 | 90% | 0.1d |  |  | 64d | Telesia | 8h | 7.2h |
| 118 | 1.3.4.3.3 | **Pinnacle Onsite Visit** |  | 6d | 2022-09-26 A | 2022-10-03 |  | 99% | 0d |  |  |  | Pinnacle | 2568h | 2480h |
| 119 | 1.3.4.3.3.1 | Work Environment | manual | 5d | 2022-09-26 A | 2022-09-30 A |  | 100% |  |  |  |  | Pinnacle | 40h | 40h |
| 120 | 1.3.4.3.3.2 | Document Storage | manual | 5d | 2022-09-26 A | 2022-09-30 A |  | 100% |  |  |  |  | Pinnacle | 40h | 40h |
| 121 | 1.3.4.3.3.3 | Cash Processing Procedures | manual | 5d | 2022-09-26 A | 2022-09-30 A |  | 100% |  |  |  |  | Pinnacle | 40h | 40h |
| 122 | 1.3.4.3.3.4 | Foreign Items Processing Procedures | manual | 5d | 2022-09-26 A | 2022-09-30 A |  | 100% |  |  |  |  | Pinnacle | 40h | 40h |
| 123 | 1.3.4.3.3.5 | Closed Box Procedures | manual | 5d | 2022-09-26 A | 2022-09-30 A |  | 100% |  |  |  |  | Pinnacle | 40h | 40h |
| 124 | 1.3.4.3.3.6 | Enrollment Forms | manual | 5d | 2022-09-26 A | 2022-09-30 A |  | 100% |  |  |  |  | Pinnacle | 40h | 40h |
| 125 | 1.3.4.3.3.7 | Courier Established: South Florida Express | manual | 5d | 2022-09-26 A | 2022-09-30 A |  | 100% |  |  |  |  | Pinnacle | 40h | 40h |
| 126 | 1.3.4.3.3.8 | UPS Setup Established | manual | 5d | 2022-09-26 A | 2022-09-30 A |  | 100% |  |  |  |  | Pinnacle | 40h | 40h |
| 127 | 1.3.4.3.3.9 | TMCS Work Return Envelopes | manual | 5d | 2022-09-26 A | 2022-09-30 A |  | 100% |  |  |  |  | Pinnacle | 40h | 40h |

Notes:
- 103: no requirements identified
- 104: Follow up and check dates
- 107: Owned by Lisa
- 111: Owned by Telesia / 09/20 tomorrow documents will be runned for Tinas visit next week
- 114: Tina will provide the dates and Conduent Operations will need to pull the items.
- 117: Pendng ICL file sent 10/17 / Telesia
- 119: Physical work area ready for Pinnacle processing
- 120: Available space for 90 days storage
- 121: Received by CLT Lockbox Ops...
- 122: Received by CLT Lockbox Ops
- 123: - Standard forward mail 30 days - Do not reuse box numbers - Leave Image history 30 days then purge - Stop all billing the following month
- 124: Updated with CLT site location: - Lockbox Change Form and WLBX/RLBX Enrollment Forms
- 125: - Daily mail pickup - Confirm Cash pickup process
- 126: Piggy back off of our Raymond James account - UPS # is WY9375
- 127: Received by CLT Lockbox Ops

| ID | WBS | Task | Type | Duration | Start | Finish | Complete | Remaining | Resources | Work | Actual work |
| --- | --- | --- | --- | --- | --- | --- | --- | --- | --- | --- | --- |
| 128 | 1.3.4.3.3.10 | **User Acceptance Testing (CAT=Conduent)** |  | 5d | 2022-09-26 A | 2022-09-30 | 99% | 0d | Pinnacle | 2160h | 2120h |
| 129 | 1.3.4.3.3.10.1 | WLBX Pinnacle Standard Procedures Batch Type and Ranges | manual | 5d | 2022-09-26 A | 2022-09-30 A | 100% |  | Pinnacle | 40h | 40h |
| 130 | 1.3.4.3.3.10.2 | WLBX Pinnacle Standard Procedures Document Scanning | manual | 5d | 2022-09-26 A | 2022-09-30 A | 100% |  | Pinnacle | 40h | 40h |
| 131 | 1.3.4.3.3.10.3 | WLBX Pinnacle Standard Procedures Correspondence/Check Stubs | manual | 5d | 2022-09-26 A | 2022-09-30 A | 100% |  | Pinnacle | 40h | 40h |
| 132 | 1.3.4.3.3.10.4 | WLBX Pinnacle Standard Procedures Credit Cards | manual | 5d | 2022-09-26 A | 2022-09-30 A | 100% |  | Pinnacle | 40h | 40h |
| 133 | 1.3.4.3.3.10.5 | WLBX Pinnacle Standard Procedures Cash Payments | manual | 5d | 2022-09-26 A | 2022-09-30 A | 100% |  | Pinnacle | 40h | 40h |
| 134 | 1.3.4.3.3.10.6 | WLBX Pinnacle Standard Procedures Foreign Checks | manual | 5d | 2022-09-26 A | 2022-09-30 A | 100% |  | Pinnacle | 40h | 40h |
| 135 | 1.3.4.3.3.10.7 | WLBX Pinnacle Standard Procedures Rejects | manual | 5d | 2022-09-26 A | 2022-09-30 A | 100% |  | Pinnacle | 40h | 40h |
| 136 | 1.3.4.3.3.10.8 | WLBX Pinnacle Standard Procedures Envelope Retention | manual | 5d | 2022-09-26 A | 2022-09-30 A | 100% |  | Pinnacle | 40h | 40h |
| 137 | 1.3.4.3.3.10.9 | WLBX Pinnacle Standard Procedures Non-Scannable Documents | manual | 5d | 2022-09-26 A | 2022-09-30 A | 100% |  | Pinnacle | 40h | 40h |
| 138 | 1.3.4.3.3.10.10 | WLBX Pinnacle Standard Procedures CD Output | manual | 5d | 2022-09-26 A | 2022-09-30 A | 100% |  | Pinnacle | 40h | 40h |
| 139 | 1.3.4.3.3.10.11 | WLBX Pinnacle TAP Reporting Logo | manual | 5d | 2022-09-26 A | 2022-09-30 A | 100% |  | Pinnacle | 40h | 40h |
| 140 | 1.3.4.3.3.10.12 | WLBX Pinnacle TAP Reporting Pre-generated Reports | manual | 5d | 2022-09-26 A | 2022-09-30 A | 100% |  | Pinnacle | 40h | 40h |
| 141 | 1.3.4.3.3.10.13 | WLBX Pinnacle TAP Reporting Image Archive | manual | 5d | 2022-09-26 A | 2022-09-30 A | 100% |  | Pinnacle | 40h | 40h |
| 142 | 1.3.4.3.3.10.14 | WLBX Pinnacle TAP Reporting Batch Review | manual | 5d | 2022-09-26 A | 2022-09-30 A | 100% |  | Pinnacle | 40h | 40h |
| 143 | 1.3.4.3.3.10.15 | WLBX Image Cash Letter - Ops | manual | 5d | 2022-09-26 A | 2022-09-30 A | 100% |  | Pinnacle | 40h | 40h |
| 144 | 1.3.4.3.3.10.16 | WLBX Image Cash Letter - Ops | manual | 5d | 2022-09-26 A | 2022-09-30 A | 100% |  | Pinnacle | 40h | 40h |
| 145 | 1.3.4.3.3.10.17 | WLBX Image Cash Letter - IP | manual | 5d | 2022-09-26 A | 2022-09-30 A | 100% |  | Pinnacle | 40h | 40h |
| 146 | 1.3.4.3.3.10.18 | WLBX Billing file - Account Analysis | manual | 5d | 2022-09-26 A | 2022-09-30 A | 100% |  | Pinnacle | 40h | 40h |
| 147 | 1.3.4.3.3.10.19 | WLBX Web Delivery - TMCS Signon | manual | 5d | 2022-09-26 A | 2022-09-30 A | 100% |  | Pinnacle | 40h | 40h |
| 148 | 1.3.4.3.3.10.20 | WLBX Web Delivery - TMCS Image Quality | manual | 5d | 2022-09-26 A | 2022-09-30 A | 100% |  | Pinnacle | 40h | 40h |
| 149 | 1.3.4.3.3.10.21 | WLBX Web Delivery - TMCS Item Search | manual | 5d | 2022-09-26 A | 2022-09-30 A | 100% |  | Pinnacle | 40h | 40h |
| 150 | 1.3.4.3.3.10.22 | WLBX Web Delivery - TMCS View Sort | manual | 5d | 2022-09-26 A | 2022-09-30 A | 100% |  | Pinnacle | 40h | 40h |
| 151 | 1.3.4.3.3.10.23 | WLBX Web Delivery - TMCS Download | manual | 5d | 2022-09-26 A | 2022-09-30 A | 100% |  | Pinnacle | 40h | 40h |
| 152 | 1.3.4.3.3.10.24 | WLBX EOB Review - TMCS Image Quality | manual | 5d | 2022-09-26 A | 2022-09-30 A | 100% |  | Pinnacle | 40h | 40h |
| 153 | 1.3.4.3.3.10.25 | WLBX Review Posting File | manual | 5d | 2022-09-26 A | 2022-09-30 A | 100% |  | Pinnacle | 40h | 40h |
| 154 | 1.3.4.3.3.10.26 | RLBX Pinnacle Standard Procedures Batch Type and Ranges | manual | 5d | 2022-09-26 A | 2022-09-30 A | 100% |  | Pinnacle | 40h | 40h |
| 155 | 1.3.4.3.3.10.27 | RLBX Pinnacle Standard Procedures Document Scanning | manual | 5d | 2022-09-26 A | 2022-09-30 A | 100% |  | Pinnacle | 40h | 40h |
| 156 | 1.3.4.3.3.10.28 | RLBX Pinnacle Standard Procedures Correspondence | manual | 5d | 2022-09-26 A | 2022-09-30 A | 100% |  | Pinnacle | 40h | 40h |
| 157 | 1.3.4.3.3.10.29 | RLBX Pinnacle Standard Procedures Check Stubs/skirts | manual | 5d | 2022-09-26 A | 2022-09-30 A | 100% |  | Pinnacle | 40h | 40h |
| 158 | 1.3.4.3.3.10.30 | RLBX Pinnacle Standard Procedures Credit Cards | manual | 5d | 2022-09-26 A | 2022-09-30 A | 100% |  | Pinnacle | 40h | 40h |
| 159 | 1.3.4.3.3.10.31 | RLBX Pinnacle Standard Procedures Cash Payments | manual | 5d | 2022-09-26 A | 2022-09-30 A | 100% |  | Pinnacle | 40h | 40h |
| 160 | 1.3.4.3.3.10.32 | RLBX Pinnacle Standard Procedures Foreign Checks | manual | 5d | 2022-09-26 A | 2022-09-30 A | 100% |  | Pinnacle | 40h | 40h |
| 161 | 1.3.4.3.3.10.33 | RLBX Pinnacle Standard Procedures Rejects | manual | 5d | 2022-09-26 A | 2022-09-30 A | 100% |  | Pinnacle | 40h | 40h |
| 162 | 1.3.4.3.3.10.34 | RLBX Pinnacle Standard Procedures Envelope Retention | manual | 5d | 2022-09-26 A | 2022-09-30 A | 100% |  | Pinnacle | 40h | 40h |
| 163 | 1.3.4.3.3.10.35 | RLBX Pinnacle Standard Procedures Non-Scannable Documents | manual | 5d | 2022-09-26 A | 2022-09-30 A | 100% |  | Pinnacle | 40h | 40h |
| 164 | 1.3.4.3.3.10.36 | RLBX Pinnacle Standard Procedures CD Output | manual | 5d | 2022-09-26 A | 2022-09-30 A | 100% |  | Pinnacle | 40h | 40h |
| 165 | 1.3.4.3.3.10.37 | RLBX Pinnacle TAP Reporting Logo | manual | 5d | 2022-09-26 A | 2022-09-30 A | 100% |  | Pinnacle | 40h | 40h |
| 166 | 1.3.4.3.3.10.38 | RLBX Pinnacle TAP Reporting Pre-generated Reports | manual | 5d | 2022-09-26 A | 2022-09-30 A | 100% |  | Pinnacle | 40h | 40h |
| 167 | 1.3.4.3.3.10.39 | RLBX Pinnacle TAP Reporting Image Archive | manual | 5d | 2022-09-26 A | 2022-09-30 A | 100% |  | Pinnacle | 40h | 40h |
| 168 | 1.3.4.3.3.10.40 | RLBX Pinnacle TAP Reporting Batch Review | manual | 5d | 2022-09-26 A | 2022-09-30 A | 100% |  | Pinnacle | 40h | 40h |
| 169 | 1.3.4.3.3.10.41 | RLBX Image Cash Letter - Ops | manual | 5d | 2022-09-26 A | 2022-09-30 A | 100% |  | Pinnacle | 40h | 40h |
| 170 | 1.3.4.3.3.10.42 | RLBX Image Cash Letter - Ops | manual | 5d | 2022-09-26 A | 2022-09-30 A | 100% |  | Pinnacle | 40h | 40h |
| 171 | 1.3.4.3.3.10.43 | RLBX Image Cash Letter - IP | manual | 5d | 2022-09-26 A | 2022-09-30 A | 100% |  | Pinnacle | 40h | 40h |
| 172 | 1.3.4.3.3.10.44 | RLBX Billing file - Account Analysis | manual | 5d | 2022-09-26 A | 2022-09-30 A | 100% |  | Pinnacle | 40h | 40h |
| 173 | 1.3.4.3.3.10.45 | RLBX Web Delivery - TMCS Signon | manual | 5d | 2022-09-26 A | 2022-09-30 A | 100% |  | Pinnacle | 40h | 40h |
| 174 | 1.3.4.3.3.10.46 | RLBX Web Delivery - TMCS Image Quality | manual | 5d | 2022-09-26 A | 2022-09-30 A | 100% |  | Pinnacle | 40h | 40h |
| 175 | 1.3.4.3.3.10.47 | RLBX Web Delivery - TMCS Item Search | manual | 5d | 2022-09-26 A | 2022-09-30 A | 100% |  | Pinnacle | 40h | 40h |
| 176 | 1.3.4.3.3.10.48 | RLBX Web Delivery - TMCS View Sort | manual | 5d | 2022-09-26 A | 2022-09-30 A | 100% |  | Pinnacle | 40h | 40h |
| 177 | 1.3.4.3.3.10.49 | RLBX Web Delivery - TMCS Download | manual | 5d | 2022-09-26 A | 2022-09-30 A | 100% |  | Pinnacle | 40h | 40h |
| 178 | 1.3.4.3.3.10.50 | RLBX EOB Review - TMCS Image Quality | manual | 5d | 2022-09-26 A | 2022-09-30 A | 100% |  | Pinnacle | 40h | 40h |
| 179 | 1.3.4.3.3.10.51 | RLBX Review Posting File | manual | 5d | 2022-09-26 A | 2022-09-30 A | 100% |  | Pinnacle | 40h | 40h |
| 180 | 1.3.4.3.3.10.52 | Email notification | manual | 5d | 2022-09-26 A | 2022-09-30 A | 100% |  | Pinnacle | 40h | 40h |
| 181 | 1.3.4.3.3.10.53 | TAP - Item Annotation | manual | 5d | 2022-09-26 A | 2022-09-30 A | 100% |  | Pinnacle | 40h | 40h |

| ID | WBS | Task | Type | Duration | Start | Finish | Predecessors | Complete | Actual start | Actual finish | Total slack | Resources | Work | Actual work |
| --- | --- | --- | --- | --- | --- | --- | --- | --- | --- | --- | --- | --- | --- | --- |
| 182 | 1.4 | **DEPLOY** |  | 15d? | 2022-10-04 A | 2022-10-24 A |  | 100% |  |  |  |  | 88h | 88h |
| 183 | 1.4.1 | **Implementation Plan** |  | 10d | 2022-10-04 A | 2022-10-17 A |  | 100% |  |  |  |  |  |  |
| 184 | 1.4.1.1 | Draft Implementation Plan document |  | 1w | 2022-10-04 A | 2022-10-10 A | 117 | 100% |  |  |  |  |  |  |
| 185 | 1.4.1.2 | Review/Approve Implementation Plan |  | 1w | 2022-10-11 A | 2022-10-17 A | 184 | 100% |  |  |  |  |  |  |
| 186 | 1.4.2 | **Go Live** |  | 1d? | 2022-10-04 | 2022-10-04 |  | 100% | 2022-10-18 | 2022-10-24 |  |  | 88h | 88h |
| 187 | 1.4.2.1 | Schedule pre-go live readiness meeting |  | 1d | 2022-10-18 A | 2022-10-18 A | 185 | 100% |  |  |  |  |  |  |
| 188 | 1.4.2.2 | **Execute Implementation Plan** |  | 4d | 2022-10-19 A | 2022-10-24 A | 187 | 100% |  |  |  |  | 88h | 88h |
| 189 | 1.4.2.2.1 | **Lockbox Migration** |  | 4d | 2022-10-19 A | 2022-10-24 A |  | 100% |  |  |  | Pinnacle | 88h | 88h |
| 190 | 1.4.2.2.1.1 | Review and Validation |  | 1d | 2022-10-19 A | 2022-10-19 A | 187 | 100% |  |  |  | Pinnacle | 8h | 8h |
| 191 | 1.4.2.2.1.2 | Go-Live -first deposit date | milestone | 0d | 2022-10-19 A | 2022-10-19 A | 190 | 100% |  |  |  |  |  |  |
| 192 | 1.4.2.2.1.3 | Lockbox Migration | manual | 3d | 2022-10-20 A | 2022-10-24 A | 191 | 100% |  |  |  | Pinnacle | 24h | 24h |
| 193 | 1.4.2.2.1.4 | Follow-up w/clients | manual | 3d | 2022-10-19 A | 2022-10-21 A |  | 100% |  |  |  | Pinnacle | 24h | 24h |
| 194 | 1.5 | **STABILIZE** |  | 44d | 2022-11-01 | 2022-12-31 |  |  |  |  | 0d |  | 184h |  |
| 195 | 1.5.1 | **Lessons Learned STABILIZE** |  | 44d | 2022-11-01 | 2022-12-31 |  |  |  |  | 0d |  | 184h |  |
| 196 | 1.5.1.1 | Draft Lessons Learned document | manual | 22d | 2022-11-01 | 2022-11-30 |  |  |  |  |  |  |  |  |
| 197 | 1.5.1.2 | Review/Approve Lessons Learned | manual | 22d | 2022-11-01 | 2022-11-30 |  |  |  |  |  |  |  |  |
| 198 | 1.5.1.3 | **Project Closeout** |  | 44d | 2022-11-01 | 2022-12-31 |  |  |  |  | 0d |  | 184h |  |
| 199 | 1.5.1.3.1 | Execute Project Closeout activities | manual | 22d | 2022-11-01 | 2022-11-30 |  |  |  |  |  |  |  |  |
| 200 | 1.5.1.3.2 | Close USPS boxes and forward | manual | 23d | 2022-12-01 | 2022-12-31 |  |  |  |  |  | Pinnacle | 184h |  |

Notes:
- 185: Runbook
- 189: Clients with DE or OCR and/or special features
